# Autonomous Go-Kart

Schedule from Planner, 2011-04-04 to 2011-09-09.
University of Canterbury
Phase: Design

## Calendars

- Default: Mon-Sun 10:00-12:00, 13:00-14:00.

## Resources

| Resource |
| --- |
| Wim |
| Simon |
| Zac |
| Henry |

## Schedule

| ID | WBS | Task | Type | Duration | Start | Finish | Predecessors | Complete | Constraint | Resources | Work |
| --- | --- | --- | --- | --- | --- | --- | --- | --- | --- | --- | --- |
| 1 | 1 | Project Setup |  |  | 2011-04-04 | 2011-04-10 |  | 100% |  |  | 21h |
| 2 | 2 | **Autonomous Go-Kart** |  |  | 2011-04-11 | 2011-09-09 | 1 |  |  |  | 1167h |
| 3 | 2.1 | Assessment: Specification Report | milestone | 0d | 2011-05-09 | 2011-05-09 |  |  | must start on 2011-05-09 | Wim; Simon [10%]; Zac [10%]; Henry [10%] |  |
| 4 | 2.2 | **Design phase** |  |  | 2011-04-11 | 2011-05-25 |  |  |  |  | 486h |
| 5 | 2.2.1 | System Diagrams |  |  | 2011-04-11 | 2011-04-28 |  | 100% |  | Wim; Henry | 108h |
| 6 | 2.2.2 | Schematic Design |  |  | 2011-04-29 | 2011-05-05 | 5 | 75% |  | Wim; Henry | 42h |
| 7 | 2.2.3 | PCB Design |  |  | 2011-05-06 | 2011-05-20 | 6 | 10% |  | Wim [50%]; Simon [20%]; Zac [20%]; Henry [50%] | 63h |
| 8 | 2.2.4 | Parts List |  |  | 2011-04-29 | 2011-05-18 | 5 | 50% |  | Wim; Simon [10%]; Zac [10%]; Henry [10%] | 75h |
| 9 | 2.2.5 | Servo Selection |  |  | 2011-04-11 | 2011-04-28 |  | 100% |  | Simon; Zac | 105h |
| 10 | 2.2.6 | Servo Circuit Schematics |  |  | 2011-04-28 | 2011-05-05 | 9 | 50% |  | Simon; Zac | 42h |
| 11 | 2.2.7 | Servo Mount Design |  |  | 2011-04-28 | 2011-05-07 | 9 | 10% |  | Simon; Zac [50%] | 42h |
| 12 | 2.2.8 | Costing |  |  | 2011-05-18 | 2011-05-25 | 11, 9, 8 | 90% |  | Wim [10%]; Simon [10%]; Zac [10%]; Henry [10%] | 9h |
| 13 | 2.3 | Order Electronics |  | 7.88d | 2011-05-25 | 2011-06-15 | 12, 7 |  |  | Wim [50%]; Henry [50%] | 63h |
| 14 | 2.4 | Order Servos |  | 7.88d | 2011-05-25 | 2011-06-15 | 12 |  |  | Simon [50%]; Zac [50%] | 63h |
| 15 | 2.5 | **Build Hardware** |  |  | 2011-06-15 | 2011-06-26 | 4 |  |  |  | 105h |
| 16 | 2.5.1 | **Mechanical Hardware** |  |  | 2011-06-15 | 2011-06-26 | 14 |  |  |  | 63h |
| 17 | 2.5.1.1 | Build Servo Brackets |  |  | 2011-06-15 | 2011-06-26 |  |  |  | Simon; Zac | 63h |
| 18 | 2.5.2 | **Electronics Hardware** |  |  | 2011-06-15 | 2011-06-22 | 13 |  |  |  | 42h |
| 19 | 2.5.2.1 | Populate compoents |  |  | 2011-06-15 | 2011-06-22 |  |  |  | Wim; Henry | 42h |
| 20 | 2.6 | **Autonomous Hardware** |  |  | 2011-06-26 | 2011-07-26 | 15 |  |  | Wim; Simon; Zac; Henry | 180h |
| 21 | 2.6.1 | Sensors |  |  | 2011-06-26 | 2011-07-26 |  |  |  |  | 90h |
| 22 | 2.6.2 | Control interface |  |  | 2011-06-26 | 2011-07-26 |  |  |  |  | 90h |
| 23 | 2.7 | **Software Devel** |  |  | 2011-07-26 | 2011-09-09 | 20, 18 |  |  |  | 270h |
| 24 | 2.7.1 | Automation Software |  |  | 2011-07-26 | 2011-09-09 |  |  |  | Wim [25%]; Simon [25%]; Zac [25%]; Henry [25%] | 135h |
| 25 | 2.7.2 | Control Software |  |  | 2011-07-26 | 2011-09-09 |  |  |  | Wim [25%]; Simon [25%]; Zac [25%]; Henry [25%] | 135h |
| 26 | 2.8 | Deadline for new jobs in the workshop | milestone | 0d | 2011-08-12 | 2011-08-12 |  |  | must start on 2011-08-12 |  |  |
